Schedule from GanttProject, 2025-01-01 to 2026-01-19.

## Calendars

- Project calendar: Mon-Fri working; Sat-Sun off.

## Schedule

| ID | WBS | Task | Duration | Start | Finish |
| --- | --- | --- | --- | --- | --- |
| 1 | 1 | **Réunions de suivi** | 256d | 2025-01-27 | 2026-01-19 |
| 2 | 1.1 | réunion 1 | 1d | 2025-01-27 | 2025-01-27 |
| 3 | 1.2 | réunion 2 | 1d | 2025-02-03 | 2025-02-03 |
| 4 | 1.3 | réunion 3 | 1d | 2025-02-10 | 2025-02-10 |
| 5 | 1.4 | réunion 4 | 1d | 2025-02-17 | 2025-02-17 |
| 6 | 1.5 | réunion 5 | 1d | 2025-02-24 | 2025-02-24 |
| 7 | 1.6 | réunion 6 | 1d | 2025-03-03 | 2025-03-03 |
| 8 | 1.7 | réunion 7 | 1d | 2025-03-10 | 2025-03-10 |
| 9 | 1.8 | réunion 8 | 1d | 2025-03-17 | 2025-03-17 |
| 10 | 1.9 | réunion 9 | 1d | 2025-03-24 | 2025-03-24 |
| 11 | 1.10 | réunion 10 | 1d | 2025-03-31 | 2025-03-31 |
| 12 | 1.11 | réunion 11 | 1d | 2025-04-07 | 2025-04-07 |
| 13 | 1.12 | réunion 12 | 1d | 2025-04-14 | 2025-04-14 |
| 14 | 1.13 | réunion 13 | 1d | 2025-04-21 | 2025-04-21 |
| 15 | 1.14 | réunion 14 | 1d | 2025-04-28 | 2025-04-28 |
| 16 | 1.15 | réunion 15 | 1d | 2025-05-05 | 2025-05-05 |
| 17 | 1.16 | réunion 16 | 1d | 2025-05-12 | 2025-05-12 |
| 18 | 1.17 | réunion 17 | 1d | 2025-05-19 | 2025-05-19 |
| 19 | 1.18 | réunion 18 | 1d | 2025-05-26 | 2025-05-26 |
| 20 | 1.19 | réunion 19 | 1d | 2025-06-02 | 2025-06-02 |
| 21 | 1.20 | réunion 20 | 1d | 2025-06-09 | 2025-06-09 |
| 22 | 1.21 | réunion 21 | 1d | 2025-06-16 | 2025-06-16 |
| 23 | 1.22 | réunion 22 | 1d | 2025-06-23 | 2025-06-23 |
| 24 | 1.23 | réunion 23 | 1d | 2025-06-30 | 2025-06-30 |
| 25 | 1.24 | réunion 24 | 1d | 2025-07-07 | 2025-07-07 |
| 26 | 1.25 | réunion 25 | 1d | 2025-07-14 | 2025-07-14 |
| 27 | 1.26 | réunion 26 | 1d | 2025-07-21 | 2025-07-21 |
| 28 | 1.27 | réunion 27 | 1d | 2025-07-28 | 2025-07-28 |
| 29 | 1.28 | réunion 28 | 1d | 2025-08-04 | 2025-08-04 |
| 30 | 1.29 | réunion 29 | 1d | 2025-08-11 | 2025-08-11 |
| 31 | 1.30 | réunion 30 | 1d | 2025-08-18 | 2025-08-18 |
| 32 | 1.31 | réunion 31 | 1d | 2025-08-25 | 2025-08-25 |
| 33 | 1.32 | réunion 32 | 1d | 2025-09-01 | 2025-09-01 |
| 34 | 1.33 | réunion 33 | 1d | 2025-09-08 | 2025-09-08 |
| 35 | 1.34 | réunion 34 | 1d | 2025-09-15 | 2025-09-15 |
| 36 | 1.35 | réunion 35 | 1d | 2025-09-22 | 2025-09-22 |
| 37 | 1.36 | réunion 36 | 1d | 2025-09-29 | 2025-09-29 |
| 38 | 1.37 | réunion 37 | 1d | 2025-10-06 | 2025-10-06 |
| 39 | 1.38 | réunion 38 | 1d | 2025-10-13 | 2025-10-13 |
| 40 | 1.39 | réunion 39 | 1d | 2025-10-20 | 2025-10-20 |
| 41 | 1.40 | réunion 40 | 1d | 2025-10-27 | 2025-10-27 |
| 42 | 1.41 | réunion 41 | 1d | 2025-11-03 | 2025-11-03 |
| 43 | 1.42 | réunion 42 | 1d | 2025-11-10 | 2025-11-10 |
| 44 | 1.43 | réunion 43 | 1d | 2025-11-17 | 2025-11-17 |
| 45 | 1.44 | réunion 44 | 1d | 2025-11-24 | 2025-11-24 |
| 46 | 1.45 | réunion 45 | 1d | 2025-12-01 | 2025-12-01 |
| 47 | 1.46 | réunion 46 | 1d | 2025-12-08 | 2025-12-08 |
| 48 | 1.47 | réunion 47 | 1d | 2025-12-15 | 2025-12-15 |
| 49 | 1.48 | réunion 48 | 1d | 2025-12-22 | 2025-12-22 |
| 50 | 1.49 | réunion 49 | 1d | 2025-12-29 | 2025-12-29 |
| 51 | 1.50 | réunion 50 | 1d | 2026-01-05 | 2026-01-05 |
| 52 | 1.51 | réunion 51 | 1d | 2026-01-12 | 2026-01-12 |
| 53 | 1.52 | réunion 52 | 1d | 2026-01-19 | 2026-01-19 |

| ID | WBS | Task | Duration | Start | Finish | Predecessors |
| --- | --- | --- | --- | --- | --- | --- |
| 54 | 2 | **Sujet des réunions** | 6d | 2025-01-27 | 2025-02-03 |  |
| 55 | 2.1 | Présentation des équipes | 1d | 2025-01-27 | 2025-01-27 | 2SS |
| 56 | 2.2 | Présentation du prototype | 1d | 2025-02-03 | 2025-02-03 | 3SS |
| 57 | 2.3 | Présentation de l'écosystème BnF - Huma-Num | 1d | 2025-02-03 | 2025-02-03 | 3SS |
| 58 | 3 | Spécification de l'écosystème | 1d | 2025-01-01 | 2025-01-01 |  |
